# 项目计划图2.0

Schedule from MS Project, 2023-10-11 to 2024-01-16, A marks actual dates.

## Calendars

- 7日工作日: Mon-Sun 08:00-12:00, 13:00-17:00.

## Resources

| Resource |
| --- |
| 朱化宇 |
| 阮星榜 |
| 侯兢喆 |
| 韩晨烨 |

## Schedule

| ID | WBS | Task | Type | Duration | Start | Finish | Predecessors | Complete | Total slack | Constraint | Resources | Work | Actual work | Text2 |
| --- | --- | --- | --- | --- | --- | --- | --- | --- | --- | --- | --- | --- | --- | --- |
| 1 | 1 | **第一阶段目标** |  | 35d? | 2023-10-11 A | 2023-11-14 A |  | 100% |  |  |  | 464h | 464h |  |
| 2 | 1.1 | **项目计划** |  | 14d? | 2023-10-11 A | 2023-10-24 A |  | 100% |  |  |  | 128h | 128h |  |
| 3 | 1.1.1 | 项目计划初稿 |  | 4d | 2023-10-11 A | 2023-10-14 A |  | 100% |  | finish no earlier than 2023-10-14 | 朱化宇 | 32h | 32h |  |
| 4 | 1.1.2 | 制作PPT |  | 3d | 2023-10-15 A | 2023-10-17 A | 3 | 100% |  | finish no earlier than 2023-10-17 | 阮星榜 | 24h | 24h |  |
| 5 | 1.1.3 | 项目计划书审核 | milestone | 0d | 2023-10-15 A | 2023-10-15 A | 3 | 100% |  | must finish on 2023-10-15 | 侯兢喆 |  |  |  |
| 6 | 1.1.4 | 第一版审核 | milestone | 0d | 2023-10-17 A | 2023-10-17 A |  | 100% |  | finish no earlier than 2023-10-17 |  |  |  |  |
| 7 | 1.1.5 | 项目计划书修改 |  | 4d | 2023-10-18 A | 2023-10-21 A | 6 | 100% |  | finish no earlier than 2023-10-21 | 侯兢喆 | 32h | 32h |  |
| 8 | 1.1.6 | 内容更新 |  | 2d | 2023-10-22 A | 2023-10-23 A | 6, 7 | 100% |  | finish no earlier than 2023-10-23 | 韩晨烨 | 16h | 16h |  |
| 9 | 1.1.7 | PPT修改 |  | 3d | 2023-10-22 A | 2023-10-24 A | 7 | 100% |  | start no earlier than 2023-10-22 | 阮星榜 | 24h | 24h |  |
| 10 | 1.1.8 | 最后审核 | milestone | 0d | 2023-10-24 A | 2023-10-24 A |  | 100% |  |  |  |  |  |  |
| 11 | 1.2 | **可行性分析** |  | 18d | 2023-10-25 A | 2023-11-11 A |  | 100% |  |  |  | 256h | 256h |  |
| 12 | 1.2.1 | 可行性分析初稿 |  | 4d | 2023-10-25 A | 2023-10-28 A | 10 | 100% |  | finish no later than 2023-10-28 | 朱化宇 | 32h | 32h |  |
| 13 | 1.2.2 | 项目计划书修改 |  | 4d | 2023-10-25 A | 2023-10-28 A | 10 | 100% |  | start no later than 2023-10-28 | 韩晨烨 | 32h | 32h |  |
| 14 | 1.2.3 | 制作PPT |  | 3d | 2023-10-29 A | 2023-10-31 A | 12 | 100% |  | finish no earlier than 2023-10-31 | 阮星榜 | 24h | 24h |  |
| 15 | 1.2.4 | 可行性研究过程123 |  | 4d | 2023-11-01 A | 2023-11-04 A |  | 100% |  |  | 朱化宇 | 32h | 32h |  |
| 16 | 1.2.5 | 可行性研究过程456 |  | 4d | 2023-11-01 A | 2023-11-04 A |  | 100% |  | finish no earlier than 2023-11-04 | 韩晨烨 | 32h | 32h |  |
| 17 | 1.2.6 | 可行性研究过程78 |  | 4d | 2023-11-01 A | 2023-11-04 A |  | 100% |  | finish no earlier than 2023-11-04 | 阮星榜 | 32h | 32h |  |
| 18 | 1.2.7 | 内容细化与更新 |  | 5d | 2023-10-25 A | 2023-10-29 A |  | 100% |  |  | 侯兢喆 | 40h | 40h |  |
| 19 | 1.2.8 | 可行性分析更改 |  | 4d | 2023-11-08 A | 2023-11-11 A | 24 | 100% |  | finish no earlier than 2023-11-11 | 朱化宇 | 32h | 32h |  |
| 20 | 1.2.9 | 可行性审核 | milestone | 0d | 2023-10-31 A | 2023-10-31 A | 14 | 100% |  | finish no earlier than 2023-10-31 |  |  |  |  |
| 21 | 1.3 | **需求分析** |  | 14d? | 2023-11-01 A | 2023-11-14 A |  | 100% |  |  |  | 80h | 80h |  |
| 22 | 1.3.1 | 需求分析初稿 |  | 4d | 2023-11-01 A | 2023-11-04 A |  | 100% |  | finish no earlier than 2023-11-04 | 侯兢喆 | 32h | 32h |  |
| 23 | 1.3.2 | 绘图 |  | 4d | 2023-11-01 A | 2023-11-04 A |  | 100% |  | finish no earlier than 2023-11-04 | 侯兢喆 | 32h | 32h |  |
| 24 | 1.3.3 | 第一版审核 | milestone | 0d | 2023-11-07 A | 2023-11-07 A |  | 100% |  | finish no earlier than 2023-11-07 |  |  |  |  |
| 25 | 1.3.4 | 召开会议及记录 | milestone | 0d | 2023-11-12 A | 2023-11-12 A | 19 | 100% |  | must finish on 2023-11-12 | 侯兢喆 |  |  |  |
| 26 | 1.3.5 | 设计界面原型 |  | 2d | 2023-11-12 A | 2023-11-13 A | 24, 19 | 100% |  | finish no earlier than 2023-11-13 | 韩晨烨 | 16h | 16h |  |
| 27 | 1.3.6 | 用户访谈 | inactive | 5d | 2023-11-08 | 2023-11-12 |  |  | 65d | finish no earlier than 2023-11-12 | 阮星榜 | 40h |  | 推迟（生病） |
| 28 | 1.3.7 | 最后审核 | milestone | 0d | 2023-11-14 A | 2023-11-14 A |  | 100% |  | start no earlier than 2023-11-14 |  |  |  |  |

| ID | WBS | Task | Type | Duration | Start | Finish | Predecessors | Complete | Actual finish | Total slack | Constraint | Resources | Work | Actual work |
| --- | --- | --- | --- | --- | --- | --- | --- | --- | --- | --- | --- | --- | --- | --- |
| 29 | 2 | **第二阶段目标** |  | 42d? | 2023-11-15 A | 2023-12-26 A |  | 100% |  |  |  |  | 1864h | 1864h |
| 30 | 2.1 | **总体设计** |  | 7d? | 2023-11-15 A | 2023-11-21 A |  | 100% |  |  |  |  | 112h | 112h |
| 31 | 2.1.1 | 总体设计初稿 |  | 4d | 2023-11-15 A | 2023-11-18 A |  | 100% |  |  | finish no earlier than 2023-11-18 | 侯兢喆 | 32h | 32h |
| 32 | 2.1.2 | 总体设计12 |  | 5d | 2023-11-15 A | 2023-11-19 A | 28 | 100% |  |  | finish no earlier than 2023-11-19 | 朱化宇 | 40h | 40h |
| 33 | 2.1.3 | 总体设计34 | manual | 2d | 2023-11-19 A | 2023-11-20 A | 31, 28 | 100% |  |  |  | 韩晨烨 | 16h | 16h |
| 34 | 2.1.4 | 总体设计56 |  | 3d | 2023-11-19 A | 2023-11-21 A | 31 | 100% |  |  | finish no earlier than 2023-11-21 | 阮星榜 | 24h | 24h |
| 35 | 2.1.5 | 审核 | milestone | 0d | 2023-11-15 A | 2023-11-15 A |  | 100% |  |  |  |  |  |  |
| 36 | 2.2 | **详细设计** |  | 7d | 2023-11-22 A | 2023-11-28 A |  | 100% |  |  |  |  | 112h | 112h |
| 37 | 2.2.1 | 详细设计引言+模块1 |  | 4d | 2023-11-22 A | 2023-11-25 A |  | 100% |  |  | finish no earlier than 2023-11-25 | 侯兢喆 | 32h | 32h |
| 38 | 2.2.2 | 详细设计模块45 |  | 4d | 2023-11-22 A | 2023-11-25 A |  | 100% |  |  | finish no earlier than 2023-11-25 | 韩晨烨 | 32h | 32h |
| 39 | 2.2.3 | 详细设计模块23 |  | 3d | 2023-11-26 A | 2023-11-28 A | 35, 37, 38 | 100% |  |  | finish no earlier than 2023-11-28 | 朱化宇 | 24h | 24h |
| 40 | 2.2.4 | 详细设计模块67 |  | 3d | 2023-11-26 A | 2023-11-28 A | 37, 38 | 100% |  |  | finish no earlier than 2023-11-28 | 阮星榜 | 24h | 24h |
| 41 | 2.2.5 | 审核 | milestone | 0d | 2023-11-28 A | 2023-11-28 A |  | 100% |  |  | finish no earlier than 2023-11-28 |  |  |  |
| 42 | 2.3 | **项目设计** |  | 7d | 2023-11-29 A | 2023-12-05 A |  | 100% |  |  |  |  | 112h | 112h |
| 43 | 2.3.1 | 详细设计修改优化 |  | 4d | 2023-11-29 A | 2023-12-02 A | 35 | 100% |  |  | finish no earlier than 2023-12-02 | 韩晨烨 | 32h | 32h |
| 44 | 2.3.2 | 绘图 |  | 4d | 2023-11-29 A | 2023-12-02 A | 41 | 100% |  |  | start no earlier than 2023-11-29 | 侯兢喆 | 32h | 32h |
| 45 | 2.3.3 | 总体设计更新优化 |  | 3d | 2023-12-03 A | 2023-12-05 A | 41, 43, 44 | 100% |  |  | finish no earlier than 2023-12-05 | 朱化宇 | 24h | 24h |
| 46 | 2.3.4 | 界面、数据库设计等 | manual | 3d | 2023-12-03 A | 2023-12-05 A | 43, 44 | 100% |  |  |  | 阮星榜 | 24h | 24h |
| 47 | 2.3.5 | 审核 | milestone | 0d | 2023-12-05 A | 2023-12-05 A |  | 100% |  |  | start no earlier than 2023-12-05 |  |  |  |
| 48 | 2.4 | **实现** |  | 42d? | 2023-11-15 A | 2023-12-26 |  | 100% | 2023-12-22 |  |  |  | 1256h | 1256h |
| 49 | 2.4.1 | 数据收集 |  | 5d | 2023-11-15 A | 2023-11-19 A |  | 100% |  |  | finish no earlier than 2023-11-19 | 朱化宇 | 40h | 40h |
| 50 | 2.4.2 | 数据标注 |  | 7d | 2023-11-20 A | 2023-11-26 A | 49 | 100% |  |  | finish no earlier than 2023-11-26 | 朱化宇; 韩晨烨 | 112h | 112h |
| 51 | 2.4.3 | 设计和训练分类模型 | inactive, manual | 7d | 2023-11-20 | 2023-11-26 |  |  |  |  |  | 侯兢喆 | 56h |  |
| 52 | 2.4.4 | 设置个性化需求筛选 |  | 7d | 2023-11-20 A | 2023-11-26 A |  | 100% |  |  | start no earlier than 2023-11-20 | 侯兢喆 | 56h | 56h |
| 53 | 2.4.5 | 设计和训练推荐模型 | inactive | 7d | 2023-11-20 | 2023-11-26 |  |  |  | 51d | finish no earlier than 2023-11-26 | 阮星榜 | 56h |  |
| 54 | 2.4.6 | 设置tag筛选 | manual | 7d | 2023-11-16 A | 2023-11-22 A |  | 100% |  |  |  | 阮星榜 | 56h | 56h |
| 55 | 2.4.7 | 设计前端 | manual | 12d | 2023-11-15 A | 2023-11-26 A |  | 100% |  |  |  | 韩晨烨 | 96h | 96h |
| 56 | 2.4.8 | 优化前后端 |  | 4d | 2023-11-27 A | 2023-11-30 A | 51, 53, 55 | 100% |  |  | finish no earlier than 2023-11-30 | 韩晨烨; 侯兢喆; 阮星榜 | 96h | 96h |
| 57 | 2.4.9 | 测试和修补 |  | 19d | 2023-12-01 A | 2023-12-19 A | 56 | 100% |  |  | finish no earlier than 2023-12-19 | 韩晨烨; 侯兢喆; 阮星榜; 朱化宇 | 608h | 608h |
| 58 | 2.4.10 | 编写代码清单 | manual | 14d | 2023-12-06 A | 2023-12-19 A |  | 100% |  |  |  | 韩晨烨 | 112h | 112h |
| 59 | 2.4.11 | 编写测试计划 | manual | 4d | 2023-12-06 A | 2023-12-09 A |  | 100% |  |  |  | 侯兢喆 | 32h | 32h |
| 60 | 2.4.12 | 测试已完成的api |  | 3d | 2023-12-20 A | 2023-12-22 A | 47, 57, 58, 59 | 100% |  |  | finish no earlier than 2023-12-12 | 朱化宇 | 24h | 24h |
| 61 | 2.4.13 | 制作翻转PPT2 |  | 3d | 2023-12-20 A | 2023-12-22 A | 58, 59 | 100% |  |  | finish no earlier than 2023-12-12 | 阮星榜 | 24h | 24h |
| 62 | 2.4.14 | 审核 | milestone | 0d | 2023-12-12 A | 2023-12-12 A |  | 100% |  |  | start no earlier than 2023-12-12 |  |  |  |

| ID | WBS | Task | Type | Duration | Start | Finish | Predecessors | Complete | Remaining | Total slack | Constraint | Resources | Work | Actual work | Text2 |
| --- | --- | --- | --- | --- | --- | --- | --- | --- | --- | --- | --- | --- | --- | --- | --- |
| 63 | 2.5 | **维护** |  | 7d | 2023-12-13 A | 2023-12-19 A |  | 100% |  |  |  |  | 136h | 136h |  |
| 64 | 2.5.1 | 修改测试计划 |  | 4d | 2023-12-13 A | 2023-12-16 A |  | 100% |  |  | finish no earlier than 2023-12-16 | 侯兢喆 | 32h | 32h |  |
| 65 | 2.5.2 | 完善前端 |  | 7d | 2023-12-13 A | 2023-12-19 A |  | 100% |  |  | finish no earlier than 2023-12-19 | 韩晨烨 | 56h | 56h |  |
| 66 | 2.5.3 | 测试完善功能 |  | 3d | 2023-12-17 A | 2023-12-19 A |  | 100% |  |  | finish no earlier than 2023-12-19 | 朱化宇 | 24h | 24h |  |
| 67 | 2.5.4 | 完善后端 | manual | 3d | 2023-12-17 A | 2023-12-19 A |  | 100% |  |  |  | 阮星榜 | 24h | 24h |  |
| 68 | 2.5.5 | 审核 | milestone | 0d | 2023-12-19 A | 2023-12-19 A |  | 100% |  |  | start no earlier than 2023-12-19 |  |  |  |  |
| 69 | 2.6 | **项目测试评审** |  | 7d? | 2023-12-20 A | 2023-12-26 A |  | 100% |  |  |  |  | 136h | 136h |  |
| 70 | 2.6.1 | 完成剩余测试 |  | 4d | 2023-12-20 A | 2023-12-23 A | 68 | 100% |  |  | finish no earlier than 2023-12-23 | 侯兢喆 | 32h | 32h |  |
| 71 | 2.6.2 | 前后端融合 |  | 7d | 2023-12-20 A | 2023-12-26 A | 68 | 100% |  |  | finish no earlier than 2023-12-26 | 韩晨烨 | 56h | 56h | 延期 |
| 72 | 2.6.3 | 编写测试报告 |  | 3d | 2023-12-24 A | 2023-12-26 A |  | 100% |  |  | finish no earlier than 2023-12-26 | 朱化宇 | 24h | 24h |  |
| 73 | 2.6.4 | 完善项目计划及其他 |  | 3d | 2023-12-24 A | 2023-12-26 A | 70 | 100% |  |  | finish no earlier than 2023-12-26 | 阮星榜 | 24h | 24h |  |
| 74 | 2.6.5 | 审核 | milestone | 0d | 2023-12-26 A | 2023-12-26 A |  | 100% |  |  | start no earlier than 2023-12-26 |  |  |  |  |
| 75 | 3 | **第三阶段目标** |  | 21d? | 2023-12-27 A | 2024-01-16 |  | 76% | 5d? |  |  |  | 416h | 312h |  |
| 76 | 3.1 | **总结** |  | 14d? | 2023-12-27 A | 2024-01-09 A |  | 100% |  |  |  |  | 312h | 312h |  |
| 77 | 3.1.1 | 测试报告修改 |  | 4d | 2023-12-27 A | 2023-12-30 A | 74 | 100% |  |  | finish no earlier than 2023-12-30 | 朱化宇 | 32h | 32h |  |
| 78 | 3.1.2 | 软件维护 |  | 14d | 2023-12-27 A | 2024-01-09 A |  | 100% |  |  | finish no earlier than 2024-01-09 | 韩晨烨 | 112h | 112h |  |
| 79 | 3.1.3 | 编写总结报告 | manual | 7d | 2023-12-27 A | 2024-01-02 A |  | 100% |  |  |  | 侯兢喆; 朱化宇 | 112h | 112h |  |
| 80 | 3.1.4 | 程序优化 |  | 7d | 2024-01-03 A | 2024-01-09 A | 77, 79 | 100% |  |  | finish no earlier than 2024-01-09 | 阮星榜 | 56h | 56h |  |
| 81 | 3.1.5 | 审核 | milestone | 0d | 2024-01-09 A | 2024-01-09 A |  | 100% |  |  | start no earlier than 2024-01-09 |  |  |  |  |
| 82 | 3.2 | **总结修改** |  | 7d? | 2024-01-10 | 2024-01-16 |  |  |  |  |  |  | 104h |  |  |
| 83 | 3.2.1 | 总结报告修改 |  | 4d | 2024-01-10 | 2024-01-13 | 81 |  |  | 0d | finish no earlier than 2024-01-13 | 侯兢喆 | 32h |  |  |
| 84 | 3.2.2 | 软件维护 |  | 3d | 2024-01-14 | 2024-01-16 | 83 |  |  | 0d | finish no earlier than 2024-01-16 | 韩晨烨; 朱化宇 | 48h |  |  |
| 85 | 3.2.3 | 程序优化 |  | 3d | 2024-01-14 | 2024-01-16 | 83 |  |  | 0d |  | 阮星榜 | 24h |  |  |
| 86 | 3.2.4 | 最后审核 | milestone | 0d | 2024-01-16 | 2024-01-16 |  |  |  | 0d | finish no earlier than 2024-01-16 |  |  |  |  |
